# Bank Building

Schedule from Primavera P6, 2022-12-01 to 2023-06-23, data date 2022-12-01.

## Calendars

- Corporate - Standard Full Time: Mon-Fri 08:00-16:00; Sat-Sun off.

## Schedule

| ID | WBS | Activity | Type | Duration | Start | Finish | Predecessors | Total float | Free float |
| --- | --- | --- | --- | --- | --- | --- | --- | --- | --- |
|  | 1 | **Project Milestone** |  |  | 2022-12-01 | 2023-06-23 |  |  |  |
| A1000 |  | Contract Award | milestone | 0d | 2022-12-01 | 2022-12-01 |  | 0d |  |
| A1010 |  | Notice to Proceed |  | 0d | 2022-12-01 | 2022-12-01 | A1000 SS | 0d |  |
| A1020 |  | Project Start |  | 0d | 2022-12-01 | 2022-12-01 | A1010 | 0d |  |
| A1030 |  | Project Finish |  | 0d | 2023-06-23 | 2023-06-23 | A2490 | 0d |  |
|  | 2 | **Pre Construction** |  |  |  |  |  |  |  |
|  | 3 | **Construction** |  |  | 2022-12-01 | 2023-06-13 |  |  |  |
|  | 1 | **Site Work** |  |  | 2022-12-01 | 2023-06-13 |  |  |  |
|  | 1 | **Initial Site Work** |  |  | 2022-12-01 | 2022-12-08 |  |  |  |
| A1040 |  | Clear Site |  | 4d | 2022-12-01 | 2022-12-06 | A1020 | 0d |  |
| A1050 |  | Onsite Marking |  | 1d | 2022-12-07 | 2022-12-07 | A1040 | 0d |  |
| A1090 |  | Site Grading |  | 1d | 2022-12-08 | 2022-12-08 | A1050 | 0d |  |
|  | 2 | **Site Utilities** |  |  | 2023-05-05 | 2023-05-30 |  |  |  |
| A1070 |  | Plumbing Final site work |  | 6d | 2023-05-05 | 2023-05-12 | A2460 | 0d |  |
| A1060 |  | Gas Final site work |  | 8d | 2023-05-15 | 2023-05-24 | A1070 | 0d |  |
| A1080 |  | Electrical Final site work |  | 4d | 2023-05-25 | 2023-05-30 | A1060 | 0d |  |
|  | 3 | **Final Sitework** |  |  | 2023-05-01 | 2023-06-13 |  |  |  |
| A2460 |  | Install Porche finishes |  | 4d | 2023-05-01 | 2023-05-04 | A1570, A2570 | 0d |  |
| A2470 |  | Sidewalks |  | 4d | 2023-05-31 | 2023-06-05 | A1080 | 0d |  |
| A2480 |  | Driveways |  | 6d | 2023-06-06 | 2023-06-13 | A2470 | 0d |  |
|  | 2 | **Sub-Structure** |  |  | 2022-12-09 | 2023-01-20 |  |  |  |
|  | 1 | **Foundation** |  |  | 2022-12-09 | 2023-01-20 |  |  |  |
| A1100 |  | Excavation from grid 1 to 4 |  | 5d | 2022-12-09 | 2022-12-15 | A1090 | 0d |  |
| A1110 |  | Stem Footing from grid 1 to 4 |  | 1d | 2022-12-16 | 2022-12-16 | A1100 | 0d |  |
| A1180 |  | Excavation from grid 4 to 7 |  | 5d | 2022-12-16 | 2022-12-22 | A1100 | 0d |  |
| A1120 |  | Reinforcement from grid 1 to 4 |  | 4d | 2022-12-19 | 2022-12-22 | A1110 | 0d |  |
| A1130 |  | Shuttering from grid 1 to 4 |  | 3d | 2022-12-23 | 2022-12-27 | A1120 | 0d |  |
| A1190 |  | Stem Footing from grid 4 to 7 |  | 1d | 2022-12-23 | 2022-12-23 | A1110, A1180 | 0d |  |
| A1200 |  | Reinforcement from grid 4 to 7 |  | 4d | 2022-12-26 | 2022-12-29 | A1120, A1190 | 0d |  |
| A1140 |  | Sleeves from grid 1 to 4 |  | 0d | 2022-12-28 | 2022-12-28 | A1130 | 0d |  |
| A1150 |  | Concrete Pouring from grid 1 to 4 |  | 1d | 2022-12-28 | 2022-12-28 | A1140 | 0d |  |
| A1160 |  | Curing from grid 1 to 4 |  | 5d | 2022-12-29 | 2023-01-04 | A1150 | 0d |  |
| A1210 |  | Shuttering from grid 4 to 7 |  | 3d | 2022-12-30 | 2023-01-03 | A1130, A1200 | 0d |  |
| A1220 |  | Sleeves from grid 4 to 7 |  | 0d | 2023-01-04 | 2023-01-04 | A1140, A1210 | 0d |  |
| A1230 |  | Concrete Pouring from grid 4 to 7 |  | 1d | 2023-01-04 | 2023-01-04 | A1150, A1220 | 0d |  |
| A1170 |  | De-Shuttering from grid 1 to 4 |  | 1d | 2023-01-05 | 2023-01-05 | A1160 | 4d | 0d |
| A1240 |  | Curing from grid 4 to 7 |  | 5d | 2023-01-05 | 2023-01-11 | A1160, A1230 | 0d |  |
| A1260 |  | Base Plate |  | 0d | 2023-01-06 | 2023-01-06 | A1170 | 11d |  |
| A1250 |  | De-Shuttering from grid 4 to 7 |  | 1d | 2023-01-12 | 2023-01-12 | A1170, A1240 | 0d |  |
| A1270 |  | Backfill |  | 2d | 2023-01-13 | 2023-01-16 | A1250 | 0d |  |
| A1280 |  | 4mm thick crushed stone |  | 4d | 2023-01-17 | 2023-01-20 | A1270 | 0d |  |

| ID | WBS | Activity | Duration | Start | Finish | Predecessors | Total float | Free float |
| --- | --- | --- | --- | --- | --- | --- | --- | --- |
|  | 3 | **Super-Structure** |  | 2023-01-17 | 2023-05-26 |  |  |  |
|  | 1 | **Column** |  | 2023-01-23 | 2023-02-03 |  |  |  |
| A1290 |  | Erection of column from grid 1 to 4 | 5d | 2023-01-23 | 2023-01-27 | A1280, A1260 | 0d |  |
| A1300 |  | Erection of column from grid 5 to 7 | 5d | 2023-01-30 | 2023-02-03 | A1290 | 0d |  |
|  | 2 | **Beam** |  | 2023-02-06 | 2023-03-15 |  |  |  |
| A1310 |  | Low Roof-Framing-peripheral beam | 3d | 2023-02-06 | 2023-02-08 | A1300 | 0d |  |
| A1320 |  | Low Roof-Framing-Girder | 2d | 2023-02-09 | 2023-02-10 | A1310 | 0d |  |
| A1330 |  | Low Roof-Installing Joist in North Phase | 4d | 2023-02-13 | 2023-02-16 | A1320 | 0d |  |
| A1340 |  | Low Roof-Installing Joist in South Phase | 4d | 2023-02-17 | 2023-02-22 | A1330 | 0d |  |
| A1350 |  | High Roof-Framing-peripheral beam | 3d | 2023-02-23 | 2023-02-27 | A1340 | 27d | 0d |
| A1360 |  | High Roof-Framing-Girder | 2d | 2023-02-28 | 2023-03-01 | A1350 | 27d | 0d |
| A1390 |  | Canopy-Framing pheripheral beam | 3d | 2023-03-02 | 2023-03-06 | A1360 | 27d | 0d |
| A1400 |  | Canopy-Framing Girder | 2d | 2023-03-07 | 2023-03-08 | A1390 | 27d | 0d |
| A1430 |  | Drive Through-Framing pheripheral beam | 3d | 2023-03-09 | 2023-03-13 | A1400 | 27d | 0d |
| A1440 |  | Drive Through-Framing Girder | 2d | 2023-03-14 | 2023-03-15 | A1430 | 27d | 0d |
|  | 3 | **Roof** |  | 2023-02-23 | 2023-05-26 |  |  |  |
| A1470 |  | Main Roof:Galvanized Roof Deck | 4d | 2023-02-23 | 2023-02-28 | A1340 | 0d |  |
| A1480 |  | Main Roof:6" Mech. Fastened Polyiso Insulation | 2d | 2023-03-01 | 2023-03-02 | A1470 | 37d | 0d |
| A1490 |  | Main Roof:1/2" Mech. Fastened dense-deck cover board | 2d | 2023-03-03 | 2023-03-06 | A1480 | 68d | 0d |
| A1500 |  | Main Roof:Fully adhered EPDM Membrane | 2d | 2023-03-07 | 2023-03-08 | A1490 | 68d | 30d |
| A1510 |  | High and Canopy Roof: Galvanized Roof Deck | 3d | 2023-03-09 | 2023-03-13 | A1400 | 30d | 0d |
| A1520 |  | High and Canopy Roof:6" Mech. Fastened Polyiso Insulation | 1d | 2023-03-14 | 2023-03-14 | A1480, A1510 | 30d | 0d |
| A1540 |  | High and Canopy Roof:Fully adhered EPDM Membrane | 1d | 2023-03-15 | 2023-03-15 | A1520 | 31d | 4d |
| A1550 |  | Drive Through:Galvanized Roof Deck | 2d | 2023-03-16 | 2023-03-17 | A1440 | 27d | 0d |
| A1560 |  | Drive Through:6" Mech. Fastened Polyiso Insulation | 1d | 2023-03-20 | 2023-03-20 | A1550, A1520 | 27d | 0d |
| A1530 |  | High and Canopy Roof:1/2" Mech. Fastened dense-deck cover board | 1d | 2023-03-21 | 2023-03-21 | A1560 | 27d | 0d |
| A1570 |  | Drive Through:Fully adhered EPDM Membrane | 1d | 2023-03-22 | 2023-03-22 | A1530, A1540 | 27d |  |
| A1580 |  | Install Walkpads | 1d | 2023-05-26 | 2023-05-26 | A2580, A2390 | 16d | 0d |

| ID | WBS | Activity | Duration | Start | Finish | Predecessors | Total float | Free float |
| --- | --- | --- | --- | --- | --- | --- | --- | --- |
|  | 4 | **Floor** |  | 2023-02-06 | 2023-02-17 |  |  |  |
| A2180 |  | Anti-termite Treatment | 1d | 2023-02-06 | 2023-02-06 | A1300 | 21d | 0d |
| A1710 |  | Reinforcement mesh | 1d | 2023-02-07 | 2023-02-07 | A2190 | 21d | 0d |
| A2190 |  | Plastic vapour retarder | 0d | 2023-02-07 | 2023-02-07 | A2180 | 21d | 0d |
| A1720 |  | Pouring Concrete | 1d | 2023-02-08 | 2023-02-08 | A1710 | 21d | 0d |
| A1730 |  | Curing | 6d | 2023-02-09 | 2023-02-16 | A1720 | 21d | 0d |
| A1740 |  | Isolation Joint | 1d | 2023-02-17 | 2023-02-17 | A1730 | 21d |  |
|  | 5 | **Stairs** |  | 2023-01-17 | 2023-05-15 |  |  |  |
| A2500 |  | Shuttering for Stairs | 2d | 2023-01-17 | 2023-01-18 | A1270 | 85d | 0d |
| A2510 |  | Reinforcement for Stairs | 4d | 2023-01-19 | 2023-01-24 | A2500 | 85d | 0d |
| A2520 |  | Pouring Concrete in Stairs | 1d | 2023-01-25 | 2023-01-25 | A2510 | 85d | 0d |
| A2530 |  | Curing for Stairs | 5d | 2023-01-26 | 2023-02-01 | A2520 | 85d | 0d |
| A2540 |  | De-Shuttering for Stairs | 1d | 2023-02-02 | 2023-02-02 | A2530 | 85d | 0d |
| A2550 |  | Plastering for stairs | 2d | 2023-02-03 | 2023-02-06 | A2540 | 85d | 69d |
| A2560 |  | Final finish for Stairs | 1d | 2023-05-15 | 2023-05-15 | A2550, A2050 | 16d | 0d |
|  | 4 | **Rough In** |  | 2023-03-21 | 2023-04-26 |  |  |  |
|  | 1 | **Mechanical** |  | 2023-03-21 | 2023-04-12 |  |  |  |
| A1840 |  | Ductwork at North-East Side | 4d | 2023-03-21 | 2023-03-24 | A1760, A1470 | 3d | 0d |
| A1850 |  | Ductwork at North-West Side | 4d | 2023-03-27 | 2023-03-30 | A1840 | 3d | 0d |
| A1860 |  | Ductwork at South Side | 7d | 2023-03-31 | 2023-04-10 | A1850 | 3d | 0d |
| A1870 |  | Installation of Flex duct | 1d | 2023-04-11 | 2023-04-11 | A1860 | 23d | 0d |
| A1880 |  | Inspection of Mechanical System | 1d | 2023-04-12 | 2023-04-12 | A1870 | 23d | 0d |
|  | 2 | **Plumbing** |  | 2023-04-06 | 2023-04-25 |  |  |  |
| A1890 |  | Plumbing Rough In for restroom | 5d | 2023-04-06 | 2023-04-12 | A1810 | 0d |  |
| A1900 |  | Plumbing Rough In for breakroom | 5d | 2023-04-13 | 2023-04-19 | A1890 | 0d |  |
| A2580 |  | Install Storm Water drain | 4d | 2023-04-20 | 2023-04-25 | A1500, A1900 | 38d | 22d |

| ID | WBS | Activity | Duration | Start | Finish | Predecessors | Total float | Free float |
| --- | --- | --- | --- | --- | --- | --- | --- | --- |
|  | 3 | **Electrical** |  | 2023-03-31 | 2023-04-20 |  |  |  |
| A1910 |  | Electrical Rough In at North Side | 4d | 2023-03-31 | 2023-04-05 | A1850 | 6d | 3d |
| A1920 |  | Electrical Rough In at South Side | 4d | 2023-04-11 | 2023-04-14 | A1860, A1910 | 3d | 0d |
| A1930 |  | Electrical Rough In at Ceiling | 4d | 2023-04-17 | 2023-04-20 | A1920 | 8d | 0d |
| A1940 |  | Set Electrical boxes | 3d | 2023-04-17 | 2023-04-19 | A1920 | 25d | 0d |
| A1950 |  | Install Electric Service Panel | 1d | 2023-04-20 | 2023-04-20 | A1940 | 25d | 14d |
|  | 4 | **Speciality Rough In** |  | 2023-04-21 | 2023-04-26 |  |  |  |
| A2140 |  | Alarm System Rough In | 1d | 2023-04-21 | 2023-04-21 | A1920, A1930 | 8d | 0d |
| A2150 |  | Telephone System Rough In | 1d | 2023-04-24 | 2023-04-24 | A2140 | 8d | 0d |
| A2160 |  | Television System Rough In | 1d | 2023-04-25 | 2023-04-25 | A2150 | 8d | 0d |
| A2170 |  | Audio Visual Rough In | 1d | 2023-04-26 | 2023-04-26 | A2160 | 8d | 0d |
|  | 5 | **Enclosure** |  | 2023-03-01 | 2023-05-05 |  |  |  |
|  | 1 | **Exterior Walls** |  | 2023-03-01 | 2023-04-28 |  |  |  |
| A1750 |  | Framing of studs for exterior drywall | 5d | 2023-03-01 | 2023-03-07 | A1470 | 0d |  |
| A1790 |  | Installation of curtain walls framing (Mullions and transoms) | 4d | 2023-03-08 | 2023-03-13 | A1750 | 0d |  |
| A2030 |  | Installation of window frames-External | 2d | 2023-03-08 | 2023-03-09 | A1750 | 3d | 0d |
| A2020 |  | Installation of door frames-External | 3d | 2023-03-10 | 2023-03-14 | A2030 | 3d | 0d |
| A1800 |  | Installation of curtain walls | 5d | 2023-03-14 | 2023-03-20 | A1790 | 0d |  |
| A1760 |  | Drywall exterior sheathing | 4d | 2023-03-15 | 2023-03-20 | A1750, A2020 | 3d | 0d |
| A1770 |  | Insulation for Exterior Drywall | 2d | 2023-04-13 | 2023-04-14 | A1760, A1890 | 3d |  |
| A1780 |  | Drywall Interior Sheathing | 4d | 2023-04-20 | 2023-04-25 | A1900, A1920, A1770 | 0d |  |
| A2570 |  | Installation of drywall siding | 3d | 2023-04-26 | 2023-04-28 | A1780 | 0d |  |
|  | 2 | **Interior Walls** |  | 2023-03-29 | 2023-05-05 |  |  |  |
| A1810 |  | Framing of Studs for interior walls | 6d | 2023-03-29 | 2023-04-05 | A2200, A1790 | 0d |  |
| A1820 |  | Insulation for interior walls | 2d | 2023-04-20 | 2023-04-21 | A1810, A1900, A1770 | 11d | 3d |
| A1830 |  | Sheathing for interior walls | 4d | 2023-04-27 | 2023-05-02 | A1820, A2170, A1780 | 8d | 0d |
| A2010 |  | Installation of door frames-Interior | 3d | 2023-05-03 | 2023-05-05 | A2020, A1830 | 8d | 0d |

| ID | WBS | Activity | Duration | Start | Finish | Predecessors | Total float | Free float |
| --- | --- | --- | --- | --- | --- | --- | --- | --- |
|  | 7 | **Finishes** |  | 2023-03-21 | 2023-06-01 |  |  |  |
|  | 1 | **Interior** |  | 2023-05-08 | 2023-05-31 |  |  |  |
| A1960 |  | Prepare drywall for resilient base interior | 2d | 2023-05-08 | 2023-05-09 | A2010 | 8d | 0d |
| A1970 |  | Apply resilient base to the drywall interior | 1d | 2023-05-10 | 2023-05-10 | A1960 | 8d | 0d |
| A2000 |  | caulk windows and doors interior | 1d | 2023-05-11 | 2023-05-11 | A1970 | 8d | 0d |
| A2040 |  | Installation of doors interior | 3d | 2023-05-19 | 2023-05-23 | A1970, A2100 | 22d |  |
| A2120 |  | Apply Final Paint Coat interior | 2d | 2023-05-30 | 2023-05-31 | A2320, A2300, A2450, A2420 | 8d | 0d |
|  | 2 | **Exterior** |  | 2023-05-11 | 2023-05-31 |  |  |  |
| A2050 |  | Prepare drywall for resilient base exterior | 2d | 2023-05-11 | 2023-05-12 | A2570, A1970 | 16d | 0d |
| A2060 |  | Apply resilient base to the drywall exterior | 1d | 2023-05-16 | 2023-05-16 | A2050, A2560 | 16d | 0d |
| A2070 |  | Prep trim for resilient base exterior | 1d | 2023-05-17 | 2023-05-17 | A2060 | 16d | 0d |
| A2100 |  | Installation of doors & windows exterior | 2d | 2023-05-17 | 2023-05-18 | A2060 | 22d | 0d |
| A2090 |  | caulk windows and doors exterior | 1d | 2023-05-19 | 2023-05-19 | A2100, A2000 | 24d |  |
| A2130 |  | Apply Final Paint coat exterior | 2d | 2023-05-29 | 2023-05-30 | A2390, A1580 | 16d | 0d |
| A2110 |  | Installation of Glazing film for curtain wall glass exterior | 1d | 2023-05-31 | 2023-05-31 | A2130 | 16d |  |
|  | 3 | **Ceiling** |  | 2023-04-13 | 2023-06-01 |  |  |  |
| A2230 |  | Framing for GWB ceiling | 3d | 2023-04-13 | 2023-04-17 | A1810, A1880 | 23d | 0d |
| A2220 |  | Framing for ACT ceiling | 3d | 2023-04-18 | 2023-04-20 | A2230 | 23d | 0d |
| A2240 |  | Installation for GWB ceiling | 4d | 2023-04-21 | 2023-04-26 | A2220 | 23d | 0d |
| A2340 |  | Cutting for GWB for light fixtures ceiling | 2d | 2023-04-27 | 2023-04-28 | A2240 | 23d | 0d |
| A2250 |  | Prepare GWB for resilient base ceiling | 2d | 2023-05-01 | 2023-05-02 | A2340 | 23d | 0d |
| A2260 |  | Apply resilient base to the GWB ceiling | 1d | 2023-05-03 | 2023-05-03 | A2250 | 23d | 0d |
| A2270 |  | Prep trim for resilient base GWB ceiling | 1d | 2023-05-04 | 2023-05-04 | A2260 | 23d | 4d |
| A2320 |  | Apply Final Paint Coat ceiling | 2d | 2023-05-11 | 2023-05-12 | A2270, A1970 | 19d | 11d |
| A2330 |  | Installation of ACT ceiling | 1d | 2023-06-01 | 2023-06-01 | A2120 | 8d |  |

| ID | WBS | Activity | Duration | Start | Finish | Predecessors | Total float | Free float |
| --- | --- | --- | --- | --- | --- | --- | --- | --- |
|  | 4 | **Floor** |  | 2023-03-21 | 2023-05-30 |  |  |  |
| A2200 |  | Installing Ceramic Tile for Main area | 6d | 2023-03-21 | 2023-03-28 | A1800, A1740 | 0d |  |
| A2600 |  | Cladding for restroom | 4d | 2023-05-03 | 2023-05-08 | A1830 | 14d | 0d |
| A2590 |  | Flooring for restroom | 3d | 2023-05-09 | 2023-05-11 | A2600 | 14d | 0d |
| A2210 |  | Install Hardwood floor | 3d | 2023-05-23 | 2023-05-25 | A2360 | 8d | 0d |
| A2290 |  | Sand, Stain, Seal Hardwood | 1d | 2023-05-26 | 2023-05-26 | A2210 | 8d | 0d |
| A2300 |  | Final coat on Hardwood | 1d | 2023-05-29 | 2023-05-29 | A2290 | 8d | 0d |
| A2310 |  | Install Carpet | 1d | 2023-05-30 | 2023-05-30 | A2300 | 10d |  |
|  | 5 | **Furniture** |  | 2023-05-12 | 2023-05-22 |  |  |  |
| A2360 |  | Install interior furniture | 7d | 2023-05-12 | 2023-05-22 | A2000 | 8d | 0d |
|  | 8 | **Fixtures** |  | 2023-05-11 | 2023-05-25 |  |  |  |
|  | 1 | **Mechanical** |  | 2023-05-18 | 2023-05-25 |  |  |  |
| A2370 |  | Install grills | 1d | 2023-05-18 | 2023-05-18 | A1880, A2070 | 16d | 0d |
| A2380 |  | Set outdoor units (AHU) | 3d | 2023-05-19 | 2023-05-23 | A2370 | 16d | 0d |
| A2390 |  | Install defusers | 2d | 2023-05-24 | 2023-05-25 | A2380 | 16d | 0d |
|  | 2 | **Electrical** |  | 2023-05-11 | 2023-05-24 |  |  |  |
| A2430 |  | Install Switch and Plugs | 5d | 2023-05-11 | 2023-05-17 | A1950, A1970 | 11d | 0d |
| A2440 |  | Install Light Fittings | 4d | 2023-05-18 | 2023-05-23 | A2430 | 11d | 0d |
| A2450 |  | Connect and test appliances Electrical | 1d | 2023-05-24 | 2023-05-24 | A2440 | 11d | 3d |
|  | 3 | **Plumbing** |  | 2023-05-12 | 2023-05-19 |  |  |  |
| A2400 |  | Install Fixtures Plumbing | 4d | 2023-05-12 | 2023-05-17 | A2590, A1970 | 14d | 0d |
| A2410 |  | Connect Appliences Plumbing | 1d | 2023-05-18 | 2023-05-18 | A2400 | 14d | 0d |
| A2420 |  | Final Inspection Plumbing | 1d | 2023-05-19 | 2023-05-19 | A2410 | 14d | 6d |
|  | 4 | **Post Construction** |  | 2023-06-14 | 2023-06-22 |  |  |  |
| A2490 |  | Final Checklist and Inspection | 7d | 2023-06-14 | 2023-06-22 | A2310, A2480, A2330 | 0d |  |
